Schedule from MS Project, 2019-02-01 to 2019-07-19, costs in zł.

## Calendars

- Standard: Mon-Fri 08:00-12:00, 13:00-17:00; Sat-Sun off.

## Resources

| Resource | Group | Rate |
| --- | --- | --- |
| Project Manager | Zespół | 100 |
| Backend Developer | Zespół | 60 |
| Junior Backend Developer | Zespół | 30 |
| Frontend Developer | Zespół | 60 |
| Junior Frontend Developer | Zespół | 30 |
| Android Developer | Zespół | 60 |
| Junior Android Developer | Zespół | 30 |
| UI Designer | Zespół | 50 |
| DevOps | Zespół | 60 |
| Tester Manualny | Zespół | 20 |
| Tester Manualny 2 | Zespół | 20 |
| Zestaw Komputerowy | Sprzęt | 5000 |
| Licencje | Koszty |  |
| Opłaty serwerowe | Koszty |  |
| Opłaty za lokal oraz media | Koszty |  |

## Schedule

| ID | WBS | Task | Duration | Start | Finish | Predecessors | Total slack | Resources | Work | Cost |
| --- | --- | --- | --- | --- | --- | --- | --- | --- | --- | --- |
| 1 | 1 | **Projekt aplikacji "Chat4B"** | 120.5d | 2019-02-01 | 2019-07-19 |  | 0d |  | 6564h | 331,240 |
| 2 | 1.1 | **Etap I - Analiza** | 5.5d | 2019-02-01 | 2019-02-08 |  | 0d | Licencje [0.1%]; Opłaty serwerowe [0.1%]; Opłaty za lokal oraz media [0.1%]; Zestaw Komputerowy | 40h | 9,000 |
| 3 | 1.1.1 | Dokumentacja wymagań klienta | 4d | 2019-02-01 | 2019-02-06 |  | 0d | Project Manager | 32h | 3,200 |
| 4 | 1.1.2 | Wybór narzędzi programistycznych i technologii | 1d | 2019-02-07 | 2019-02-07 | 3 | 0d | Project Manager | 8h | 800 |
| 5 | 1.1.3 | Protokół etapu I | 4h | 2019-02-08 | 2019-02-08 | 4 | 0d |  |  |  |
| 6 | 1.2 | **Etap II - Projekt systemu I organizacja** | 11.5d | 2019-02-08 | 2019-02-25 | 2 | 0d | Licencje [0.1%]; Opłaty serwerowe [0.1%]; Opłaty za lokal oraz media [0.1%]; Zestaw Komputerowy | 480h | 27,960 |
| 7 | 1.2.1 | Konfiguracja systemu kontrolii wersji | 1d | 2019-02-08 | 2019-02-11 | 2 | 0d | DevOps | 8h | 480 |
| 8 | 1.2.2 | Konfiguracja systemu Continous Integration | 1d | 2019-02-11 | 2019-02-12 | 7 | 9.5d | DevOps | 8h | 480 |
| 9 | 1.2.3 | Instalacja I konfiguracja bazy danych | 2d | 2019-02-11 | 2019-02-13 | 7 | 0d | Backend Developer; DevOps | 32h | 1,920 |
| 10 | 1.2.4 | Stworzenie projektu Backend | 3d | 2019-02-13 | 2019-02-18 | 9 | 5d | Backend Developer; Junior Backend Developer | 48h | 2,160 |
| 11 | 1.2.5 | Stworzenie projektu Frontend | 8d | 2019-02-13 | 2019-02-25 | 9 | 0d | Frontend Developer; Junior Frontend Developer; UI Designer | 192h | 8,960 |
| 12 | 1.2.6 | Stworzenie projektu Android | 8d | 2019-02-13 | 2019-02-25 | 9 | 0d | Android Developer; Junior Android Developer; UI Designer | 192h | 8,960 |
| 13 | 1.2.7 | Protokół etapu II | 4h | 2019-02-25 | 2019-02-25 | 12, 10, 11 | 0d |  |  |  |
| 14 | 1.3 | **Etap III - Prototyp** | 30.5d | 2019-02-26 | 2019-04-09 | 6 | 0d | Opłaty serwerowe [0.1%]; Opłaty za lokal oraz media [0.1%]; Zestaw Komputerowy; Licencje [0.1%] | 1536h | 76,920 |
| 15 | 1.3.1 | Stworzenie struktury bazy danych | 2d | 2019-02-26 | 2019-02-27 |  | 19d | DevOps | 16h | 960 |
| 16 | 1.3.2 | Implementacja systemu Backend | 21d | 2019-02-26 | 2019-03-26 |  | 0d | Backend Developer; Junior Backend Developer | 336h | 15,120 |
| 17 | 1.3.3 | Implementacja systemu Frontend | 21d | 2019-02-26 | 2019-03-26 |  | 0d | Frontend Developer; Junior Frontend Developer | 336h | 15,120 |
| 18 | 1.3.4 | Implementacja systemu Android | 21d | 2019-02-26 | 2019-03-26 |  | 0d | Android Developer; Junior Android Developer | 336h | 15,120 |
| 19 | 1.3.5 | Retrospektywa | 1d | 2019-03-27 | 2019-03-27 | 18, 15, 16, 17 | 0d | Android Developer; Backend Developer; DevOps; Frontend Developer; Project Manager; UI Designer | 48h | 3,120 |
| 20 | 1.3.6 | Testy I poprawa krytycznych funkcjonalności | 7d | 2019-03-28 | 2019-04-05 | 19 | 0d | Android Developer; Backend Developer; DevOps; Frontend Developer; Junior Android Developer; Junior Backend Developer; Junior Frontend Developer; UI Designer | 448h | 21,280 |
| 21 | 1.3.7 | Prezentacja postępu klientowi | 1d | 2019-04-08 | 2019-04-08 | 20 | 0d | Project Manager; UI Designer | 16h | 1,200 |
| 22 | 1.3.8 | Protokół etapu III | 4h | 2019-04-09 | 2019-04-09 | 21 | 0d |  |  |  |
| 23 | 1.4 | **Etap IV - Produkcja** | 42.5d | 2019-04-09 | 2019-06-06 | 14 | 0d | Licencje [0.1%]; Opłaty serwerowe [0.1%]; Opłaty za lokal oraz media [0.1%]; Zestaw Komputerowy | 2448h | 116,840 |
| 24 | 1.4.1 | Napisanie testów dla Backend | 10d | 2019-04-09 | 2019-04-23 |  | 32.5d | Backend Developer; Junior Backend Developer | 160h | 7,200 |
| 25 | 1.4.2 | Implemetnacja zabezpieczeń oraz dodatkowych funkcjonalności - Backend | 30d | 2019-04-09 | 2019-05-21 |  | 10d | Backend Developer; Junior Backend Developer | 480h | 21,600 |
| 26 | 1.4.3 | Napisanie testów dla Frontend | 14d | 2019-04-09 | 2019-04-29 |  | 28.5d | Frontend Developer; Junior Frontend Developer | 224h | 10,080 |
| 27 | 1.4.4 | Dodanie nowych funkcjonalnosci - Frontend | 40d | 2019-04-09 | 2019-06-04 |  | 0d | Frontend Developer; Junior Frontend Developer | 640h | 28,800 |
| 28 | 1.4.5 | Napisanie testów dla Android | 14d | 2019-04-09 | 2019-04-29 |  | 28.5d | Android Developer; Junior Android Developer | 224h | 10,080 |
| 29 | 1.4.6 | Dodanie nowych funkcjonalnosci - Android | 40d | 2019-04-09 | 2019-06-04 |  | 0d | Android Developer; Junior Android Developer | 640h | 28,800 |
| 30 | 1.4.7 | Konsultacje z klientem | 2d | 2019-06-04 | 2019-06-06 | 29, 25, 27 | 0d | Android Developer; Backend Developer; Frontend Developer; Project Manager; UI Designer | 80h | 5,280 |
| 31 | 1.4.8 | Protokół etapu IV | 4h | 2019-06-06 | 2019-06-06 | 30 | 0d |  |  |  |

| ID | WBS | Task | Duration | Start | Finish | Predecessors | Total slack | Resources | Work | Cost |
| --- | --- | --- | --- | --- | --- | --- | --- | --- | --- | --- |
| 32 | 1.5 | **Etap V - Wdrożenie** | 30.5d | 2019-06-07 | 2019-07-19 | 23 | 0d | Opłaty serwerowe [0.1%]; Opłaty za lokal oraz media [0.1%]; Zestaw Komputerowy; Licencje [0.1%] | 2060h | 100,520 |
| 33 | 1.5.1 | Testy manualne | 7d | 2019-06-07 | 2019-06-17 |  | 7d | Tester Manualny; Tester Manualny 2 | 112h | 2,240 |
| 34 | 1.5.2 | Optymalizacja oraz refactoring kodu | 14d | 2019-06-07 | 2019-06-26 |  | 0d | Android Developer; Backend Developer; DevOps; Frontend Developer; Junior Android Developer; Junior Backend Developer; Junior Frontend Developer; UI Designer | 896h | 42,560 |
| 35 | 1.5.3 | Poprawki kodu | 7d | 2019-06-27 | 2019-07-05 | 34, 33 | 0d | Android Developer; Backend Developer; DevOps; Frontend Developer; Junior Android Developer; Junior Backend Developer; Junior Frontend Developer | 392h | 18,480 |
| 36 | 1.5.4 | Umieszczenie aplikacji w sieci | 2d | 2019-07-08 | 2019-07-09 | 35 | 5d | DevOps; Frontend Developer; Backend Developer | 48h | 2,880 |
| 37 | 1.5.5 | Umieszczenie aplikacji w Android Play | 6h | 2019-07-08 | 2019-07-08 | 35 | 6.25d | Android Developer; DevOps | 12h | 720 |
| 38 | 1.5.6 | Sporządznie dokumentacji projektu | 7d | 2019-07-08 | 2019-07-16 | 35 | 0d | Android Developer; Backend Developer; DevOps; Frontend Developer; Junior Android Developer; Junior Backend Developer; Junior Frontend Developer; Tester Manualny; UI Designer | 504h | 22,400 |
| 39 | 1.5.7 | Oddanie produktu klientowi | 2d | 2019-07-17 | 2019-07-18 | 38, 36, 37 | 0d | Android Developer; Backend Developer; DevOps; Frontend Developer; Project Manager; UI Designer | 96h | 6,240 |
| 40 | 1.5.8 | Protokół etapu V | 4h | 2019-07-19 | 2019-07-19 | 39 | 0d |  |  |  |
